# Enviro365 ecommerce development

Schedule from MS Project, 2024-04-01 to 2024-07-09.

## Calendars

- Standard: Mon-Fri 08:00-12:00, 13:00-17:00; Sat-Sun off.

## Resources

| Resource |
| --- |
| Test Analyst |
| Automation Tester |
| Test Analyst Manual |
| Full Stack Snr |
| Full Stack Intermediate |
| Jnr BE |
| Jnr FE |
| Intermediate FE |
| Product Owner |
| UX/UI Designer |
| Client |

## Schedule

| ID | WBS | Task | Type | Duration | Start | Finish | Predecessors | Total slack | Free slack | Constraint | Resources | Work |
| --- | --- | --- | --- | --- | --- | --- | --- | --- | --- | --- | --- | --- |
| 1 | 1 | **Enviro365 eCommerce Development** |  | 72d | 2024-04-01 | 2024-07-09 |  | 0d |  |  |  | 2528h |
| 2 | 1.1 | **Executive Summary** |  | 70d | 2024-04-01 | 2024-07-08 |  | 1d |  |  |  |  |
| 3 | 1.1.1 | Project Kick-Off | milestone | 0d | 2024-04-01 | 2024-04-01 | 15 | 71d |  |  |  |  |
| 4 | 1.1.2 | Requirements Gathering Complete | milestone | 0d | 2024-04-08 | 2024-04-08 | 17 | 66d |  |  |  |  |
| 5 | 1.1.3 | UI/UX Design Complete | milestone | 0d | 2024-04-22 | 2024-04-22 | 20 | 56d |  |  |  |  |
| 6 | 1.1.4 | Development Complete | milestone | 0d | 2024-05-27 | 2024-05-27 | 26 | 31d |  |  |  |  |
| 7 | 1.1.5 | Testing Complete | milestone | 0d | 2024-07-08 | 2024-07-08 | 31 | 1d |  |  |  |  |
| 8 | 1.1.6 | Deployment Complete | milestone | 0d | 2024-07-08 | 2024-07-08 | 42 | 1d |  |  |  |  |
| 9 | 1.2 | Project Kick-Off |  | 1d | 2024-07-03 | 2024-07-03 |  | 4d |  |  |  |  |
| 10 | 1.3 | **Daily Check-in** |  | 2.03d | 2024-07-03 | 2024-07-05 |  | 2.97d |  |  |  |  |
| 11 | 1.3.1 | Daily Check-in 1 |  | 15min | 2024-07-03 | 2024-07-03 |  | 4.97d |  | start no earlier than 2024-07-03 |  |  |
| 12 | 1.3.2 | Daily Check-in 2 |  | 15min | 2024-07-04 | 2024-07-04 |  | 3.97d |  | start no earlier than 2024-07-04 |  |  |
| 13 | 1.3.3 | Daily Check-in 3 |  | 15min | 2024-07-05 | 2024-07-05 |  | 2.97d |  | start no earlier than 2024-07-05 |  |  |
| 14 | 1.4 | **Initiation** |  | 1d | 2024-04-01 | 2024-04-01 |  | 0d |  |  |  |  |
| 15 | 1.4.1 | Project Kick-off |  | 1d | 2024-04-01 | 2024-04-01 |  | 0d |  | start no earlier than 2024-04-01 |  |  |
| 16 | 1.5 | **Requirements** |  | 6d | 2024-04-02 | 2024-04-09 |  | 0d |  |  |  | 200h |
| 17 | 1.5.1 | Requirement Gathering |  | 5d | 2024-04-02 | 2024-04-08 | 15 | 0d |  | start no earlier than 2024-04-01 | Full Stack Intermediate; Full Stack Snr; Intermediate FE; Product Owner; Client | 200h |
| 18 | 1.5.2 | Gate Review |  | 1d | 2024-04-09 | 2024-04-09 | 17 | 65d |  |  |  |  |
| 19 | 1.6 | **Design and Planning** |  | 63d | 2024-04-09 | 2024-07-04 |  | 3d |  |  |  | 200h |
| 20 | 1.6.1 | UI/UX Design |  | 10d | 2024-04-09 | 2024-04-22 | 17 | 10d | 0d |  | UX/UI Designer | 80h |
| 21 | 1.6.2 | Design Review Meeting |  | 1d | 2024-07-03 | 2024-07-03 |  | 3d | 0d |  | Client; Full Stack Snr; Product Owner; UX/UI Designer | 32h |
| 22 | 1.6.3 | Gate review |  | 1d | 2024-07-04 | 2024-07-04 | 21 | 3d |  |  | Automation Tester; Client; Full Stack Intermediate; Full Stack Snr; Intermediate FE; Jnr BE; Jnr FE; Product Owner; Test Analyst; Test Analyst Manual; UX/UI Designer | 88h |
| 23 | 1.7 | **Development** |  | 36d | 2024-04-09 | 2024-05-28 |  | 0d |  |  |  | 1168h |
| 24 | 1.7.1 | Backend Development |  | 20d | 2024-04-09 | 2024-05-06 | 17 | 0d |  |  | Full Stack Intermediate; Full Stack Snr; Jnr BE | 480h |
| 25 | 1.7.2 | Database Setup |  | 15d | 2024-05-07 | 2024-05-27 | 24 | 0d |  |  | Full Stack Snr; Jnr BE | 240h |
| 26 | 1.7.3 | Frontend Development |  | 15d | 2024-05-07 | 2024-05-27 | 20, 24 | 0d |  |  | Full Stack Snr; Jnr FE; Intermediate FE | 360h |
| 27 | 1.7.4 | Gate Review |  | 1d | 2024-05-28 | 2024-05-28 | 26 | 30d |  |  | Automation Tester; Client; Full Stack Intermediate; Full Stack Snr; Intermediate FE; Jnr BE; Jnr FE; Product Owner; Test Analyst; Test Analyst Manual; UX/UI Designer | 88h |

| ID | WBS | Task | Duration | Start | Finish | Predecessors | Total slack | Free slack | Constraint | Resources | Work |
| --- | --- | --- | --- | --- | --- | --- | --- | --- | --- | --- | --- |
| 28 | 1.8 | **Testing** | 31d | 2024-05-28 | 2024-07-09 |  | 0d |  |  |  | 560h |
| 29 | 1.8.1 | Integration Testing | 10d | 2024-05-28 | 2024-06-10 | 24, 25, 26 | 0d |  |  | Automation Tester; Test Analyst Manual | 160h |
| 30 | 1.8.2 | User Acceptance Testing (UAT) | 10d | 2024-06-11 | 2024-06-24 | 29 | 0d |  |  | Test Analyst Manual; Product Owner; UX/UI Designer | 240h |
| 31 | 1.8.3 | Bug Fixing and Optimization | 10d | 2024-06-25 | 2024-07-08 | 30 | 0d |  |  | Full Stack Snr | 80h |
| 32 | 1.8.4 | Gate Review | 1d | 2024-07-09 | 2024-07-09 | 31 | 0d |  |  | Client; Full Stack Intermediate; Full Stack Snr; Intermediate FE; Jnr BE; Jnr FE; Product Owner; Test Analyst; Test Analyst Manual; UX/UI Designer | 80h |
| 33 | 1.9 | **Deploy** | 10.12d | 2024-06-25 | 2024-07-09 |  | 0.88d |  |  |  | 400h |
| 34 | 1.9.1 | Deployment Planning | 5d | 2024-06-25 | 2024-07-01 | 30 | 1d | 0d |  | Full Stack Snr; Full Stack Intermediate; Jnr BE; Jnr FE; Intermediate FE | 200h |
| 35 | 1.9.2 | **Implementation Checkpoint** | 4.12d | 2024-07-03 | 2024-07-09 |  | 0.88d |  |  |  |  |
| 36 | 1.9.2.1 | Implementation Checkpoint 1 | 1h | 2024-07-03 | 2024-07-03 |  | 4.88d |  | start no earlier than 2024-07-03 |  |  |
| 37 | 1.9.2.2 | Implementation Checkpoint 2 | 1h | 2024-07-04 | 2024-07-04 |  | 3.88d |  | start no earlier than 2024-07-04 |  |  |
| 38 | 1.9.2.3 | Implementation Checkpoint 3 | 1h | 2024-07-05 | 2024-07-05 |  | 2.88d |  | start no earlier than 2024-07-05 |  |  |
| 39 | 1.9.2.4 | Implementation Checkpoint 4 | 1h | 2024-07-08 | 2024-07-08 |  | 1.88d |  | start no earlier than 2024-07-06 |  |  |
| 40 | 1.9.2.5 | Implementation Checkpoint 5 | 1h | 2024-07-08 | 2024-07-08 |  | 1.88d |  | start no earlier than 2024-07-08 |  |  |
| 41 | 1.9.2.6 | Implementation Checkpoint 6 | 1h | 2024-07-09 | 2024-07-09 |  | 0.88d |  | start no earlier than 2024-07-09 |  |  |
| 42 | 1.9.3 | Task Deployment | 5d | 2024-07-02 | 2024-07-08 | 34 | 1d | 0d |  | Full Stack Snr; Full Stack Intermediate; Jnr BE; Jnr FE; Intermediate FE | 200h |
